# SAÉ 2.06

Schedule from ProjectLibre, 2022-09-05 to 2023-02-21, 7 hours a day.

## Calendars

- Standard: Mon-Fri 08:30-12:00, 13:00-16:30; Sat-Sun off.

## Resources

| Resource |
| --- |
| Non attribué |
| Entreprise |
| ST |

## Schedule

| ID | WBS | Task | Duration | Start | Finish | Predecessors | Resources |
| --- | --- | --- | --- | --- | --- | --- | --- |
| 1 | 1 | **Construction de l'ouvrage** | 120d | 2022-09-05 | 2023-02-21 |  |  |
| 2 | 1.1 | **Phase I** | 40d | 2022-09-05 | 2022-10-28 |  |  |
| 3 | 1.1.1 | Installation - Signalisation | 5d | 2022-09-05 | 2022-09-09 |  | Entreprise |
| 4 | 1.1.2 | Terrassement généraux | 5d | 2022-09-12 | 2022-09-16 | 3 | ST |
| 5 | 1.1.3 | Culée C5 | 5d | 2022-09-19 | 2022-09-23 | 4 | Entreprise |
| 6 | 1.1.4 | Pile P4 | 10d | 2022-09-19 | 2022-09-30 | 4 | Entreprise |
| 7 | 1.1.5 | Pile P2 | 10d | 2022-10-03 | 2022-10-14 | 6 | Entreprise |
| 8 | 1.1.6 | Pile P3 | 10d | 2022-10-17 | 2022-10-28 | 7 | Entreprise |
| 9 | 1.1.7 | Culée C1 | 5d | 2022-09-26 | 2022-09-30 | 5 | Entreprise |
| 10 | 1.2 | Remblais | 21d | 2022-10-31 | 2022-11-30 | 2 | ST |
| 11 | 1.3 | **Phase II** | 59d | 2022-12-01 | 2023-02-21 |  |  |
| 12 | 1.3.1 | Culée C1 chevêtre | 5d | 2022-12-01 | 2022-12-07 | 10 | Entreprise |
| 13 | 1.3.2 | Culée C5 chevêtre | 5d | 2022-12-08 | 2022-12-14 | 12 | Entreprise |
| 14 | 1.3.3 | Étaiement - Coffrage - Ferraillage du Tablier | 15d | 2022-12-15 | 2023-01-04 | 13 | Entreprise |
| 15 | 1.3.4 | Bétonnage | 1d | 2023-01-05 | 2023-01-05 | 14 | Entreprise |
| 16 | 1.3.5 | Durcissement du béton | 5d | 2023-01-06 | 2023-01-12 | 15 | Entreprise |
| 17 | 1.3.6 | Décoffrage - Dévérinage | 5d | 2023-01-13 | 2023-01-19 | 16 | Entreprise |
| 18 | 1.3.7 | Dalle de Transition | 5d | 2023-01-20 | 2023-01-26 | 17 | Entreprise |
| 19 | 1.3.8 | Murs garde grève des chevêtres C1 & C5 | 5d | 2023-01-27 | 2023-02-02 | 18 | Entreprise |
| 20 | 1.3.9 | Corniche | 5d | 2023-02-03 | 2023-02-09 | 19 | Entreprise |
| 21 | 1.3.10 | Étanchéité | 5d | 2023-02-03 | 2023-02-09 | 19 | ST |
| 22 | 1.3.11 | Garde-corps | 3d | 2023-02-08 | 2023-02-10 | 21SS+2.62d | ST |
| 23 | 1.3.12 | Trottoirs | 2d | 2023-02-13 | 2023-02-14 | 20, 22 | Entreprise |
| 24 | 1.3.13 | Perrés (revêtement du talus sous ouvrage) | 5d | 2023-02-15 | 2023-02-21 | 23 | Entreprise |
| 25 | 1.3.14 | Finitions (chaussée) | 5d | 2023-02-13 | 2023-02-17 | 22 | ST |
